# Software Biblioteca

Schedule from MS Project, 2018-04-09 to 2018-07-04, 2 hours a day, costs in €, A marks actual dates.

## Calendars

- Standard: Mon-Tue 13:30-15:30; Wed 09:00-12:30; Thu-Sun off. Exceptions (off unless hours are given): 2018-04-11 (não trabalhamos).

## Resources

| Resource | Group | Rate |
| --- | --- | --- |
| Flávio | RH | 5 |
| André | RH | 5 |
| Carlota | RH | 5 |
| Rodrigo | RH | 5 |

## Schedule

| ID | WBS | Task | Type | Duration | Start | Finish | Predecessors | Complete | Remaining | Total slack | Free slack | Constraint | Resources | Work | Actual work | Cost | Actual cost | Acção |
| --- | --- | --- | --- | --- | --- | --- | --- | --- | --- | --- | --- | --- | --- | --- | --- | --- | --- | --- |
| 1 | 1 | **Planeamento** |  | 16.5d | 2018-04-09 08:00 A | 2018-05-09 11:30 |  | 65% | 5.82d | 0.1d | 0d |  |  | 39.77h | 38.53h | 198.83 | 192.67 |  |
| 2 | 1.1 | Microsoft Project |  | 33h | 2018-04-09 13:30 A | 2018-05-09 11:30 |  | 30% | 23.1h | 0.1d | 0d | start no earlier than 2018-04-09 08:00 | Flávio [70%]; André [7%] | 7.87h | 6.63h | 39.33 | 33.17 | mais tempo |
| 3 | 1.2 | **Relatório Requisitos** |  | 6.75d | 2018-04-09 08:00 A | 2018-04-23 15:30 A |  | 100% |  |  |  |  |  | 14.9h | 14.9h | 74.5 | 74.5 |  |
| 4 | 1.2.1 | Investigação no terreno |  | 0.5h | 2018-04-09 13:30 A | 2018-04-09 14:00 A |  | 100% |  |  |  |  | Flávio | 0.5h | 0.5h | 2.5 | 2.5 |  |
| 5 | 1.2.2 | Introdução |  | 5h | 2018-04-09 08:00 A | 2018-04-16 14:30 A | 4 | 100% |  |  |  |  | André [40%]; Flávio [60%] | 4h | 4h | 20 | 20 |  |
| 6 | 1.2.3 | Requisitos Funcionais |  | 9h | 2018-04-10 13:30 A | 2018-04-18 10:00 A | 4 | 100% |  |  |  | start no earlier than 2018-04-10 08:00 | André [60%]; Flávio [40%] | 7.5h | 7.5h | 37.5 | 37.5 | mais rh e mais tempo |
| 7 | 1.2.4 | Requisitos Não Funcionais |  | 2h | 2018-04-18 08:00 A | 2018-04-18 11:30 A | 4 | 100% |  |  |  | start no earlier than 2018-04-18 08:00 | André [90%]; Flávio [10%] | 0.5h | 0.5h | 2.5 | 2.5 |  |
| 8 | 1.2.5 | Diagrama Casos de Uso |  | 2h | 2018-04-23 13:30 A | 2018-04-23 15:30 A | 6, 7 | 100% |  |  |  | start no earlier than 2018-04-23 08:00 | André; Flávio [10%]; Rodrigo [10%] | 2.4h | 2.4h | 12 | 12 |  |
| 9 | 1.3 | **Relatório Planeamento** |  | 2.75d | 2018-04-17 08:00 A | 2018-04-18 12:30 A |  | 100% |  |  |  |  |  | 6h | 6h | 30 | 30 |  |
| 10 | 1.3.1 | Planificação Geral do Projeto |  | 2h | 2018-04-18 09:00 A | 2018-04-18 11:00 A |  | 100% |  |  |  | start no earlier than 2018-04-18 08:00 | André [50%]; Flávio [50%] | 2h | 2h | 10 | 10 | mais rh |
| 11 | 1.3.2 | Plano de riscos |  | 3h | 2018-04-18 09:30 A | 2018-04-18 12:30 A |  | 100% |  |  |  | start no earlier than 2018-04-18 08:00 | Flávio [50%]; André [50%]; Rodrigo [20%] | 2h | 2h | 10 | 10 | mais rh e mais tempo |
| 12 | 1.3.3 | Matriz de Responsabilidades |  | 2h | 2018-04-17 08:00 A | 2018-04-17 17:00 A |  | 100% |  |  |  | start no earlier than 2018-04-17 08:00 | Flávio [90%]; André [10%] | 2h | 2h | 10 | 10 |  |
| 13 | 1.4 | **Relatório Scrum** |  | 2d | 2018-05-08 13:30 A | 2018-05-09 11:00 A |  | 100% |  |  |  |  |  | 11h | 11h | 55 | 55 |  |
| 14 | 1.4.1 | Introdução |  | 0.5h | 2018-05-08 13:30 A | 2018-05-08 14:00 A |  | 100% |  |  |  | start no earlier than 2018-05-08 08:00 | André | 0.5h | 0.5h | 2.5 | 2.5 |  |
| 15 | 1.4.2 | stakeholders |  | 0.5h | 2018-05-08 13:30 A | 2018-05-08 14:00 A |  | 100% |  |  |  | start no earlier than 2018-05-08 08:00 | André | 0.5h | 0.5h | 2.5 | 2.5 |  |
| 16 | 1.4.3 | Product Backlog |  | 4h | 2018-05-08 13:30 A | 2018-05-09 11:00 A | 3, 9 | 100% |  |  |  | start no earlier than 2018-05-08 08:00 | André; Flávio | 8h | 8h | 40 | 40 | mais rh |
| 17 | 1.4.4 | Sprints |  | 2h | 2018-05-08 13:30 A | 2018-05-08 15:30 A | 3, 9 | 100% |  |  |  | start no earlier than 2018-05-08 08:00 | André; Flávio; Carlota | 2h | 2h | 10 | 10 |  |
| 18 | 1.5 | Conclusão do planeamento | milestone | 0d | 2018-05-09 11:30 | 2018-05-09 11:30 | 2, 3, 9, 13 |  |  | 0.1d |  |  |  |  |  |  |  |  |
| 19 | 2 | **Sprint 1** |  | 27.4d | 2018-04-25 08:00 A | 2018-06-13 11:18 |  | 49% | 14.07d | 10.85d |  |  |  | 132h | 55.1h | 660 | 275.5 |  |
| 20 | 2.1 | **Investigação javafx** |  | 13d | 2018-04-25 08:00 A | 2018-05-19 11:00 |  | 63% | 4.86d | 25.25d |  |  |  | 25.7h | 14.1h | 128.5 | 70.5 |  |
| 21 | 2.1.1 | criação tabelas |  | 6h | 2018-04-25 08:00 A | 2018-05-01 14:00 A |  | 100% |  |  |  | start no earlier than 2018-04-25 08:00 | André; Flávio; Rodrigo | 7.2h | 7.2h | 36 | 36 | mais rh e mais tempo |
| 22 | 2.1.2 | adicionar campos tabela |  | 0.5h | 2018-05-01 14:00 A | 2018-05-01 14:30 A | 21 | 100% |  |  |  |  | Flávio | 0.5h | 0.5h | 2.5 | 2.5 | mais rh e mais tempo |
| 23 | 2.1.3 | editar campos tabela |  | 4h | 2018-05-14 13:30 A | 2018-05-15 15:30 |  | 80% | 0.8h | 22d | 0d | start no earlier than 2018-05-14 08:00 | Flávio; André | 8h | 6.4h | 40 | 32 | mais rh e mais tempo |
| 24 | 2.1.4 | apagar campos tabela |  | 5h | 2018-05-16 09:00 | 2018-05-19 11:00 | 23 |  |  | 24.5d |  |  | Flávio; André | 10h |  | 50 |  | mais rh e mais tempo |

| ID | WBS | Task | Type | Duration | Start | Finish | Predecessors | Complete | Remaining | Total slack | Free slack | Constraint | Resources | Work | Actual work | Cost | Actual cost | Acção |
| --- | --- | --- | --- | --- | --- | --- | --- | --- | --- | --- | --- | --- | --- | --- | --- | --- | --- | --- |
| 25 | 2.2 | **Tabelas** |  | 11.5d | 2018-05-01 14:00 A | 2018-05-22 14:30 |  | 57% | 5d | 23.75d |  |  |  | 31.7h | 18.2h | 158.5 | 91 |  |
| 26 | 2.2.1 | criar tabela utilizadores comuns |  | 1h | 2018-05-01 14:00 A | 2018-05-01 15:00 A | 21 | 100% |  |  |  | start no earlier than 2018-04-30 08:00 | Flávio | 1h | 1h | 5 | 5 |  |
| 27 | 2.2.2 | criar tabela livros |  | 1.5h | 2018-05-14 13:30 A | 2018-05-14 15:00 A | 26 | 100% |  |  |  | start no earlier than 2018-05-14 08:00 | Flávio | 1.5h | 1.5h | 7.5 | 7.5 |  |
| 28 | 2.2.3 | criar tabela requisições |  | 0.5h | 2018-05-14 15:00 A | 2018-05-14 15:30 A | 27 | 100% |  |  |  |  | Flávio | 0.5h | 0.5h | 2.5 | 2.5 |  |
| 29 | 2.2.4 | Registar utilizadores comuns |  | 2h | 2018-05-15 13:30 A | 2018-05-15 15:30 A | 22, 28 | 100% |  |  |  |  | Carlota [10%]; André; Flávio | 4.2h | 4.2h | 21 | 21 |  |
| 30 | 2.2.5 | Registar livro |  | 3h | 2018-05-15 08:00 A | 2018-05-16 10:00 A | 27, 29 | 100% |  |  |  |  | André; Flávio | 6h | 6h | 30 | 30 |  |
| 31 | 2.2.6 | editar linhas tabelas |  | 10h | 2018-05-16 09:00 | 2018-05-19 16:00 | 23 |  |  | 1.5d |  |  | André; Rodrigo | 13.5h |  | 67.5 |  |  |
| 32 | 2.2.7 | apagar linhas tabelas |  | 5h | 2018-05-19 16:00 A | 2018-05-22 14:30 A | 24, 31 | 100% |  |  |  |  | Flávio; Carlota; Rodrigo | 5h | 5h | 25 | 25 |  |
| 33 | 2.3 | Janela de Informação |  | 2h | 2018-05-09 11:30 A | 2018-05-14 14:30 | 1 | 10% | 1.8h | 28.5d |  |  | André | 2h | 0.2h | 10 | 1 |  |
| 34 | 2.4 | Registo de requisições |  | 5h | 2018-05-16 08:00 A | 2018-05-28 13:48 A | 25 | 100% |  |  |  | finish no earlier than 2018-05-16 10:00 | Flávio; André; Carlota; Rodrigo | 19.6h | 19.6h | 98 | 98 | mais rh e mais tempo |
| 35 | 2.5 | Devolução de requisições |  | 1h | 2018-05-28 13:48 | 2018-05-28 14:48 | 34 |  |  | 18.85d | 0d |  | André; Carlota | 2h |  | 10 |  |  |
| 36 | 2.6 | Edição de requisições |  | 4h | 2018-05-28 14:48 | 2018-05-30 10:18 | 35 |  |  | 18.85d |  |  | Carlota; Rodrigo | 8h |  | 40 |  |  |
| 37 | 2.7 | pesquisa de requisições por aluno |  | 2h | 2018-05-30 10:18 A | 2018-05-30 12:18 A | 36 | 100% |  |  |  |  | Flávio | 2h | 2h | 10 | 10 |  |
| 38 | 2.8 | pesquisa de requisições por livro |  | 1h | 2018-06-05 14:18 A | 2018-06-05 15:18 A | 37 | 100% |  |  |  |  | Flávio | 1h | 1h | 5 | 5 |  |
| 39 | 2.9 | Pesquisar qualquer tabela por qualquer campo |  | 10h | 2018-06-05 15:18 | 2018-06-13 11:18 | 38 |  |  | 0d |  |  | André; Flávio; Carlota; Rodrigo | 40h |  | 200 |  |  |
| 40 | 3 | Reunião 22/5 | manual | 2h | 2018-05-22 08:00 | 2018-05-22 10:00 |  |  |  |  |  |  |  |  |  |  |  |  |
| 41 | 4 | Conclusão Sprint 1 | milestone | 0d | 2018-05-22 10:00 | 2018-05-22 10:00 | 40 |  |  | 38.5d | 0d |  |  |  |  |  |  |  |
| 42 | 5 | **Sprint 2** |  | 17.9d | 2018-05-15 08:00 A | 2018-06-18 13:48 |  |  | 17.9d | 10.1d |  |  |  | 44.75h |  | 223.75 |  |  |
| 43 | 5.1 | **save/load** |  | 6d | 2018-05-22 13:30 | 2018-05-30 11:30 |  |  |  | 12.25d | 0d |  |  | 15h |  | 75 |  |  |
| 44 | 5.1.1 | Save state .bin |  | 3h | 2018-05-22 13:30 | 2018-05-23 10:00 | 41 |  |  | 12.25d | 0d |  | Flávio [50%] | 1.5h |  | 7.5 |  |  |
| 45 | 5.1.2 | load state .bin |  | 3h | 2018-05-23 10:00 | 2018-05-28 14:00 | 44 |  |  | 12.25d | 0d |  | Flávio [50%] | 1.5h |  | 7.5 |  |  |
| 46 | 5.1.3 | importar tabelas .csv |  | 3h | 2018-05-28 14:00 | 2018-05-29 15:00 | 45 |  |  | 12.25d | 0d |  | Carlota; Rodrigo | 6h |  | 30 |  |  |
| 47 | 5.1.4 | exportar tabelas .csv |  | 3h | 2018-05-29 15:00 | 2018-05-30 11:30 | 46 |  |  | 12.25d |  |  | Carlota; Rodrigo | 6h |  | 30 |  |  |
| 48 | 5.2 | criar tabela funcionarios/admins |  | 1h | 2018-05-22 13:30 | 2018-05-22 14:30 | 41 |  |  | 23.75d |  |  | André; Carlota | 2h |  | 10 |  |  |
| 49 | 5.3 | bloquear falta de permissões |  | 12h | 2018-05-30 11:30 | 2018-06-12 15:00 | 52, 43 |  |  | 12.25d |  |  | André [50%]; Flávio [50%]; Rodrigo | 24h |  | 120 |  | mais rh e mais tempo |
| 50 | 5.4 | Ocultar colunas nas pesquisas a pedido do utilizador |  | 1.5h | 2018-05-15 08:00 A | 2018-06-18 13:48 | 39 |  | 1.5h | 10.1d |  | start no earlier than 2018-05-15 08:00 | Flávio [50%] | 0.75h |  | 3.75 |  |  |

| ID | WBS | Task | Type | Duration | Start | Finish | Predecessors | Total slack | Free slack | Constraint | Resources | Work | Cost | Acção |
| --- | --- | --- | --- | --- | --- | --- | --- | --- | --- | --- | --- | --- | --- | --- |
| 51 | 5.5 | **scene de login** |  | 1d | 2018-05-22 13:30 | 2018-05-22 15:30 |  | 17.25d |  |  |  | 3h | 15 |  |
| 52 | 5.5.1 | Login |  | 2h | 2018-05-22 13:30 | 2018-05-22 15:30 | 41 | 17.25d | 5d |  | André [50%]; Rodrigo | 3h | 15 | mais tempo |
| 53 | 5.6 | Reunião 12/6 | manual | 4d | 2018-06-12 08:00 | 2018-06-12 16:00 |  |  |  |  |  |  |  |  |
| 54 | 5.7 | Conclusão sprint 2 | milestone | 0d | 2018-06-12 16:00 | 2018-06-12 16:00 | 53 | 0d |  |  |  |  |  |  |
| 55 | 6 | Conclusão do projeto |  | 12d | 2018-06-13 09:00 | 2018-07-04 10:30 | 54 | 0d |  | finish no earlier than 2018-06-16 17:00 |  |  |  |  |
